# 3

Schedule from MS Project, 2013-02-19 to 2014-10-23.
njcec
cec

## Calendars

- 标准: Mon-Fri 08:00-12:00, 13:00-17:00; Sat-Sun off.

## Schedule

| ID | WBS | Task | Duration | Start | Finish | Predecessors | Total slack | Free slack | Constraint |
| --- | --- | --- | --- | --- | --- | --- | --- | --- | --- |
| 1 | 1 | **XXXX机组工程** | 438d | 2013-02-19 | 2014-10-23 |  | 0d |  |  |
| 2 | 1.1 | 1 编制项目开工报告 | 3d | 2013-02-19 | 2013-02-21 |  | 435d |  | start no earlier than 2013-02-19 |
| 3 | 1.2 | **2 初步设计** | 25d | 2013-02-25 | 2013-03-29 |  | 341d |  |  |
| 4 | 1.2.1 | 2.1 设计收资 | 2d | 2013-02-25 | 2013-02-26 |  | 430d | 0d | start no earlier than 2013-02-25 |
| 5 | 1.2.2 | 2.2 PID图设计 | 2d | 2013-02-27 | 2013-02-28 | 4 | 430d |  | start no earlier than 2007-07-20 |
| 6 | 1.2.3 | 2.3 设备布置图设计 | 6d | 2013-02-28 | 2013-03-07 |  | 415d | 0d | start no earlier than 2013-02-28 |
| 7 | 1.2.4 | 2.4 土建提资 | 2d | 2013-03-08 | 2013-03-11 | 6 | 415d | 0d |  |
| 8 | 1.2.5 | 2.5 设备条件图设计 | 2d | 2013-03-12 | 2013-03-13 | 7 | 415d | 0d |  |
| 9 | 1.2.6 | 2.6 电气负荷 | 2d | 2013-03-14 | 2013-03-15 | 8 | 415d | 0d |  |
| 10 | 1.2.7 | 2.7 I/O 清册 | 2d | 2013-03-18 | 2013-03-19 | 9 | 415d | 0d |  |
| 11 | 1.2.8 | 2.8 仪表清册 | 2d | 2013-03-20 | 2013-03-21 | 10 | 415d |  |  |
| 12 | 1.2.9 | 2.9 第一次设计联络会 | 1d | 2013-03-29 | 2013-03-29 |  | 317d | 0d | start no earlier than 2013-03-29 |
| 13 | 1.3 | **3 施工图设计** | 92d | 2013-04-01 | 2013-08-06 | 12 | 317d |  |  |
| 14 | 1.3.1 | 3.1 设备制造总图设计 | 7d | 2013-04-01 | 2013-04-09 | 12 | 317d | 0d |  |
| 15 | 1.3.2 | 3.2 精处理单元管道图设计 | 58d | 2013-04-10 | 2013-06-28 | 14 | 317d | 0d | finish no earlier than 2011-03-02 |
| 16 | 1.3.3 | 3.3 再生辅助单元管道图设计 | 10d | 2013-07-01 | 2013-07-12 | 15 | 317d | 0d | start no earlier than 2011-12-02 |
| 17 | 1.3.4 | 3.4 辅机安装图设计 | 7d | 2013-07-15 | 2013-07-23 | 16 | 317d | 0d | start no earlier than 2008-08-11 |
| 18 | 1.3.5 | 3.5 二联会资料整理准备 | 2d | 2013-07-24 | 2013-07-25 | 17 | 317d | 0d | finish no earlier than 2008-08-26 |
| 19 | 1.3.6 | 3.6 二联会资料校核 | 1d | 2013-07-26 | 2013-07-26 | 18 | 317d | 0d | finish no earlier than 2008-08-28 |
| 20 | 1.3.7 | 3.7 第二次设计联络会 | 1d | 2013-07-29 | 2013-07-29 | 19 | 317d | 0d | finish no earlier than 2008-09-01 |
| 21 | 1.3.8 | 3.8 二联会后修改 | 1d | 2013-07-30 | 2013-07-30 | 20 | 317d | 0d | finish no earlier than 2008-09-07 |
| 22 | 1.3.9 | 3.9 施工图校核 | 5d | 2013-07-31 | 2013-08-06 | 21 | 317d |  | finish no earlier than 2008-09-15 |
| 23 | 1.4 | **4 订货文件** | 150d | 2013-03-06 | 2013-10-01 |  | 277d |  |  |
| 24 | 1.4.1 | 4.1 进口阀门订货文件编制 | 3d | 2013-04-01 | 2013-04-03 | 12 | 404d | 0d | start no earlier than 2012-02-16 |
| 25 | 1.4.2 | 4.2 水帽内件（滤元）订货文件编制 | 2d | 2013-04-04 | 2013-04-05 | 24 | 404d |  |  |
| 26 | 1.4.3 | 4.3 中压设备订货文件编制 | 2d | 2013-03-25 | 2013-03-26 |  | 412d |  | start no earlier than 2013-03-25 |
| 27 | 1.4.4 | 4.4 低压及辅助设备订货文件编制 | 2d | 2013-03-06 | 2013-03-07 |  | 425d |  | start no earlier than 2013-03-06 |
| 28 | 1.4.5 | 4.5 国产泵、风机、阀门订货文件编制 | 1d | 2013-04-01 | 2013-04-01 |  | 408d |  | start no earlier than 2013-04-01 |
| 29 | 1.4.6 | 4.6 管道、管件、紧固件订货文件编制 | 4d | 2013-09-10 | 2013-09-13 |  | 236d | 0d | start no earlier than 2013-09-10 |
| 30 | 1.4.7 | 4.7 订货总清册编制 | 3d | 2013-09-16 | 2013-09-18 | 29 | 236d | 0d | start no earlier than 2012-05-30 |
| 31 | 1.4.8 | 4.8 进口仪表订货文件编制（控制） | 7d | 2013-06-21 | 2013-07-01 |  | 343d |  | start no earlier than 2013-06-21 |
| 32 | 1.4.9 | 4.9 国产仪表订货文件编制（控制） | 7d | 2013-07-01 | 2013-07-09 |  | 337d |  | start no earlier than 2013-07-01 |
| 33 | 1.4.10 | 4.10 备品备件订货文件编制（控制） | 7d | 2013-03-25 | 2013-04-02 |  | 407d |  | finish no earlier than 2013-04-02 |
| 34 | 1.4.11 | 4.11 安装材料订货文件编制（控制） | 7d | 2013-09-23 | 2013-10-01 |  | 277d |  | start no earlier than 2013-09-23 |
| 35 | 1.4.12 | 4.12 盘柜订货文件编制（控制） | 7d | 2013-09-23 | 2013-10-01 |  | 277d |  | start no earlier than 2013-09-23 |

| ID | WBS | Task | Duration | Start | Finish | Predecessors | Total slack | Free slack | Constraint |
| --- | --- | --- | --- | --- | --- | --- | --- | --- | --- |
| 36 | 1.5 | **5 设备制造周期** | 102d | 2013-08-12 | 2013-12-31 |  | 212d |  |  |
| 37 | 1.5.1 | 5.1 泵机制造周期 | 70d | 2013-09-02 | 2013-12-06 |  | 229d |  | start no earlier than 2013-09-02 |
| 38 | 1.5.2 | 5.2 进口阀门制造周期 | 85d | 2013-09-02 | 2013-12-27 |  | 214d |  | start no earlier than 2013-09-02 |
| 39 | 1.5.3 | 5.3 国产阀门制造周期 | 70d | 2013-09-02 | 2013-12-06 |  | 229d |  | start no earlier than 2013-09-02 |
| 40 | 1.5.4 | 5.4 进口内件制造周期 | 50d | 2013-09-19 | 2013-11-27 | 30 | 236d |  |  |
| 41 | 1.5.5 | 5.5 中压设备制造图确认 | 12d | 2013-08-12 | 2013-08-27 |  | 212d | 0d | start no earlier than 2013-08-12 |
| 42 | 1.5.6 | 5.6 中压设备制造周期 | 90d | 2013-08-28 | 2013-12-31 | 41 | 212d |  | finish no earlier than 2013-05-23 |
| 43 | 1.5.7 | 5.7 低压设备制造图确认 | 5d | 2013-08-12 | 2013-08-16 |  | 219d | 0d | start no earlier than 2013-08-12 |
| 44 | 1.5.8 | 5.8 低压设备制造周期 | 90d | 2013-08-19 | 2013-12-20 | 43 | 219d |  | finish no earlier than 2013-05-23 |
| 45 | 1.6 | **6 交货** | 74d | 2013-12-19 | 2014-04-01 |  | 147d |  |  |
| 46 | 1.6.1 | 6.1 1#机国产泵、风机、阀门交货 | 10d | 2014-03-19 | 2014-04-01 |  | 147d |  | finish no earlier than 2014-04-01 |
| 47 | 1.6.2 | 6.2 1#机中压设备交货 | 10d | 2014-03-19 | 2014-04-01 |  | 147d |  | finish no earlier than 2014-04-01 |
| 48 | 1.6.3 | 6.3 1#机低压设备交货 | 10d | 2014-03-19 | 2014-04-01 |  | 147d |  | finish no earlier than 2014-04-01 |
| 49 | 1.6.4 | 6.4 1#机常压设备交货 | 10d | 2014-03-19 | 2014-04-01 |  | 147d |  | finish no earlier than 2014-04-01 |
| 50 | 1.6.5 | 6.5 1#机进口设备交货 | 10d | 2014-03-19 | 2014-04-01 |  | 147d |  | finish no earlier than 2014-04-01 |
| 51 | 1.6.6 | 6.6 1#机管道管件交货 | 10d | 2014-03-19 | 2014-04-01 |  | 147d |  | finish no earlier than 2014-04-01 |
| 52 | 1.6.7 | 6.7 1#机仪表、盘柜、仪表阀、安装材料 | 10d | 2014-03-19 | 2014-04-01 |  | 147d |  | finish no earlier than 2014-04-01 |
| 53 | 1.6.8 | 6.8 1#机开箱验货及清点 | 10d | 2014-03-19 | 2014-04-01 |  | 147d |  | finish no earlier than 2014-04-01 |
| 54 | 1.6.9 | 6.9 2#机国产泵、风机、阀门交货 | 10d | 2013-12-19 | 2014-01-01 |  | 211d |  | finish no earlier than 2014-01-01 |
| 55 | 1.6.10 | 6.10 2#机中压设备交货 | 10d | 2013-12-19 | 2014-01-01 |  | 211d |  | finish no earlier than 2014-01-01 |
| 56 | 1.6.11 | 6.11 2#机低压设备交货 | 10d | 2013-12-19 | 2014-01-01 |  | 211d |  | finish no earlier than 2014-01-01 |
| 57 | 1.6.12 | 6.12 2#机常压设备交货 | 10d | 2013-12-19 | 2014-01-01 |  | 211d |  | finish no earlier than 2014-01-01 |
| 58 | 1.6.13 | 6.13 2#机进口设备交货 | 10d | 2013-12-19 | 2014-01-01 |  | 211d |  | finish no earlier than 2014-01-01 |
| 59 | 1.6.14 | 6.14 2#机管道管件交货 | 10d | 2013-12-19 | 2014-01-01 |  | 211d |  | finish no earlier than 2014-01-01 |
| 60 | 1.6.15 | 6.15 2#机仪表、盘柜、仪表阀、安装材料 | 10d | 2013-12-19 | 2014-01-01 |  | 211d |  | finish no earlier than 2014-01-01 |
| 61 | 1.6.16 | 6.16 2#机开箱验货及清点 | 10d | 2013-12-19 | 2014-01-01 |  | 211d |  | finish no earlier than 2014-01-01 |

| ID | WBS | Task | Duration | Start | Finish | Predecessors | Total slack | Free slack | Constraint |
| --- | --- | --- | --- | --- | --- | --- | --- | --- | --- |
| 62 | 1.7 | **7 安装** | 115d | 2014-01-16 | 2014-06-25 |  | 22d |  |  |
| 63 | 1.7.1 | 7.1 安装技术交底 | 1d | 2014-01-16 | 2014-01-16 |  | 22d | 0d | start no earlier than 2014-01-16 |
| 64 | 1.7.2 | 7.2 安装指导 | 110d | 2014-01-17 | 2014-06-19 | 63 | 22d | 0d | finish no earlier than 2013-12-23 |
| 65 | 1.7.3 | 7.3 安装检查 | 4d | 2014-06-20 | 2014-06-25 | 64 | 22d | 0d | start no earlier than 2006-08-04 |
| 66 | 1.8 | 8 现场培训 | 5d | 2014-06-26 | 2014-07-02 | 65 | 22d |  | start no earlier than 2013-07-19 |
| 67 | 1.9 | 9 1#机单机调试 | 30d | 2014-08-04 | 2014-09-12 | 66 | 0d |  | start no earlier than 2014-08-04 |
| 68 | 1.10 | 10 1#机联机调试 | 20d | 2014-09-15 | 2014-10-10 | 67 | 0d |  | start no earlier than 2006-09-07 |
| 69 | 1.11 | 11 1#机168试运行 | 7d | 2014-10-13 | 2014-10-21 | 68 | 0d |  | start no earlier than 2006-09-21 |
| 70 | 1.12 | 12 1#机项目验收 | 2d | 2014-10-22 | 2014-10-23 | 69 | 0d |  | start no earlier than 2006-10-05 |
| 71 | 1.13 | 14 2#机单机调试 | 20d | 2014-06-26 | 2014-07-23 |  | 47d | 0d | start no earlier than 2014-06-26 |
| 72 | 1.14 | 15 2#机联机调试 | 10d | 2014-07-24 | 2014-08-06 | 71 | 47d | 0d | start no earlier than 2006-10-24 |
| 73 | 1.15 | 16 2#机168试运行 | 7d | 2014-08-07 | 2014-08-15 | 72 | 47d | 0d | start no earlier than 2006-11-07 |
| 74 | 1.16 | 17 2#机项目验收 | 2d | 2014-08-18 | 2014-08-19 | 73 | 47d |  |  |
