Schedule from MS Project, 2008-09-20 to 2009-10-30, A marks actual dates.

## Calendars

- 标准: Mon-Fri 08:00-12:00, 13:00-17:00; Sat-Sun off. Exceptions (off unless hours are given): 2008-09-20 08:00-12:00, 13:00-17:00, 2008-10-25 08:00-12:00, 13:00-17:00, 2008-11-15 08:00-12:00, 13:00-17:00, 2008-11-30 08:00-12:00, 13:00-17:00, 2009-02-28 08:00-12:00, 13:00-17:00, 2009-03-15 08:00-12:00, 13:00-17:00, 2009-05-10 08:00-12:00, 13:00-17:00, 2009-05-30 08:00-12:00, 13:00-17:00, 2009-06-20 08:00-12:00, 13:00-17:00, 2009-07-05 08:00-12:00, 13:00-17:00, 2009-08-15 08:00-12:00, 13:00-17:00, 2009-08-30 08:00-12:00, 13:00-17:00, 2009-10-10 08:00-12:00, 13:00-17:00, 2009-10-25 08:00-12:00, 13:00-17:00.

## Resources

| Resource |
| --- |
| 1 |
| 2 |
| 3 |

## Schedule

| ID | WBS | Task | Type | Duration | Start | Finish | Complete | Remaining | Baseline start | Baseline finish | Baseline duration | Total slack | Constraint |
| --- | --- | --- | --- | --- | --- | --- | --- | --- | --- | --- | --- | --- | --- |
| 1 | 1 | **常、减压炉及烟囱区** |  | 298d? | 2008-09-28 A | 2009-10-30 | 30% | 208.15d? | 2008-09-15 | 2009-10-30 | 309d? | 0d |  |
| 2 | 1.1 | **主要控制点** |  | 291d? | 2008-10-08 A | 2009-10-30 | 23% | 224.28d? | 2008-10-08 | 2009-10-30 | 291d? | 0d |  |
| 3 | 1.1.1 | 基础开挖,回填完成具备常减压炉施工条件 |  | 47d? | 2008-10-08 A | 2008-12-08 A | 100% |  | 2008-10-08 | 2008-11-18 | 32d? |  | start no earlier than 2008-10-08 |
| 4 | 1.1.2 | 烟囱基础具备施工条件 | milestone | 1d? | 2008-11-07 | 2008-11-07 |  |  | 2008-11-07 | 2008-11-07 | 1d? | 267d | start no earlier than 2008-11-07 |
| 5 | 1.1.3 | 完成烟囱基础施工 | milestone | 1d? | 2008-12-30 | 2008-12-30 |  |  | 2008-12-30 | 2008-12-30 | 1d? | 228d | start no earlier than 2008-12-30 |
| 6 | 1.1.4 | 完成烟囱主体施工 | milestone | 1d? | 2009-06-30 | 2009-06-30 |  |  | 2009-06-30 | 2009-06-30 | 1d? | 93d | start no earlier than 2009-06-30 |
| 7 | 1.1.5 | 完成常减压炉土建基础施工 |  | 38d? | 2008-11-25 | 2009-01-14 |  |  | 2008-11-25 | 2009-01-14 | 38d? | 217d | start no earlier than 2008-11-25 |
| 8 | 1.1.6 | 炉体辐射段钢结构及衬里完成,炉管安装完成 |  | 57d? | 2009-02-16 | 2009-05-01 |  |  | 2009-02-16 | 2009-05-01 | 57d? | 138d | start no earlier than 2009-02-15 |
| 9 | 1.1.7 | 对流段钢结构、炉管预制安装 |  | 58d? | 2009-04-21 | 2009-07-05 |  |  | 2009-04-21 | 2009-07-05 | 58d? | 89d | finish no earlier than 2009-07-05 |
| 10 | 1.1.8 | 完成烟道及炉管试压、炉体附件安装,工艺管道安装、试压、防腐保温 | milestone | 1d? | 2009-10-10 | 2009-10-10 |  |  | 2009-10-10 | 2009-10-10 | 1d? | 16d | start no earlier than 2009-10-10 |
| 11 | 1.1.9 | 完成三查四定 |  | 1d? | 2009-10-30 | 2009-10-30 |  |  | 2009-10-30 | 2009-10-30 | 1d? | 0d | start no earlier than 2009-10-30 |
| 12 | 1.2 | **保主要控制点的设计条件** |  | 198d? | 2008-09-28 A | 2009-06-20 | 78% | 43.46d? | 2008-09-15 | 2009-06-20 | 209d? | 100d |  |
| 13 | 1.2.1 | 完成基础平面图并交付基础大开挖施工图 | milestone | 0d? | 2008-09-28 A | 2008-09-28 A | 100% |  | 2008-09-15 | 2008-09-15 | 1d? |  | start no earlier than 2008-09-15 |
| 14 | 1.2.2 | 提供烟囱基础80%量料单 | milestone | 1d? | 2008-09-30 | 2008-09-30 |  |  | 2008-09-30 | 2008-09-30 | 1d? | 296d | start no earlier than 2008-09-30 |
| 15 | 1.2.3 | 提供烟囱基础施工图 | milestone | 0d? | 2008-10-13 A | 2008-10-13 A | 100% |  | 2008-10-15 | 2008-10-15 | 1d? |  | start no earlier than 2008-10-15 |
| 16 | 1.2.4 | 提供烟囱筒体施工图 | milestone | 31d? | 2008-11-07 A | 2008-12-17 A | 100% |  | 2008-11-30 | 2008-11-30 | 1d? |  | start no earlier than 2008-11-30 |
| 17 | 1.2.5 | 交付炉区基础图 | milestone | 1d? | 2008-11-25 A | 2008-11-25 A | 100% |  | 2008-11-15 | 2008-11-15 | 1d? |  | start no earlier than 2008-11-15 |
| 18 | 1.2.6 | 交付余热回收烟道支架以及鼓、引风机等所有施工图 | milestone | 1d? | 2009-04-30 | 2009-04-30 |  |  | 2009-04-30 | 2009-04-30 | 1d? | 139d | start no earlier than 2009-04-30 |
| 19 | 1.2.7 | 提交加热炉基础80%量的钢筋和水泥备料单。（未确定） | milestone | 1d? | 2008-11-10 | 2008-11-10 |  |  | 2008-11-10 | 2008-11-10 | 1d? | 266d | start no earlier than 2008-11-10 |
| 20 | 1.2.8 | 提交炉管订货料单 | milestone | 1d? | 2008-10-25 | 2008-10-25 |  |  | 2008-10-25 | 2008-10-25 | 1d? | 277d | start no earlier than 2008-10-25 |
| 21 | 1.2.9 | 提交衬里材料订货料单 | milestone | 1d? | 2008-11-30 | 2008-11-30 |  |  | 2008-11-30 | 2008-11-30 | 1d? | 250d | start no earlier than 2008-11-30 |
| 22 | 1.2.10 | 前交付加热炉钢结构焊接H400以上和热轧H400以上型钢白图料单 | milestone | 1d? | 2008-12-22 | 2008-12-22 |  |  | 2008-12-22 | 2008-12-22 | 1d? | 234d | start no earlier than 2008-12-20 |
| 23 | 1.2.11 | 前交付加热炉钢结构白图 | milestone | 1d? | 2008-12-30 | 2008-12-30 |  |  | 2008-12-30 | 2008-12-30 | 1d? | 228d | start no earlier than 2008-12-30 |
| 24 | 1.2.12 | 炉体施工图到 | milestone | 1d? | 2009-02-20 | 2009-02-20 |  |  | 2009-02-20 | 2009-02-20 | 1d? | 190d | start no earlier than 2009-02-20 |
| 25 | 1.2.13 | 炉区工艺配管施工图到 | milestone | 1d? | 2009-06-20 | 2009-06-20 |  |  | 2009-06-20 | 2009-06-20 | 1d? | 100d | start no earlier than 2009-06-20 |

| ID | WBS | Task | Type | Duration | Start | Finish | Complete | Remaining | Baseline start | Baseline finish | Baseline duration | Total slack | Constraint |
| --- | --- | --- | --- | --- | --- | --- | --- | --- | --- | --- | --- | --- | --- |
| 26 | 1.3 | **保主要控制点的物资供应条件** |  | 113d? | 2008-10-15 | 2009-03-15 |  |  | 2008-10-15 | 2009-03-15 | 113d? | 173d |  |
| 27 | 1.3.1 | 完成烟囱基础施工备料 | milestone | 1d? | 2008-10-15 | 2008-10-15 |  |  | 2008-10-15 | 2008-10-15 | 1d? | 285d | start no earlier than 2008-10-15 |
| 28 | 1.3.2 | 完成烟囱筒体施工备料 | milestone | 1d? | 2008-12-30 | 2008-12-30 |  |  | 2008-12-30 | 2008-12-30 | 1d? | 228d | start no earlier than 2008-12-30 |
| 29 | 1.3.3 | 炉区土建基础材料到货 | milestone | 1d? | 2008-11-25 | 2008-11-25 |  |  | 2008-11-25 | 2008-11-25 | 1d? | 254d | start no earlier than 2008-11-25 |
| 30 | 1.3.4 | 炉体钢结构材料到货（型钢按需定尺） | milestone | 1d? | 2009-01-30 | 2009-01-30 |  |  | 2009-01-30 | 2009-01-30 | 1d? | 205d | start no earlier than 2009-01-30 |
| 31 | 1.3.5 | 衬里材料到货 | milestone | 1d? | 2009-03-15 | 2009-03-15 |  |  | 2009-03-15 | 2009-03-15 | 1d? | 173d | start no earlier than 2009-03-15 |
| 32 | 1.3.6 | 炉管包括配件到货 |  | 11d? | 2009-03-02 | 2009-03-15 |  |  | 2009-03-02 | 2009-03-15 | 11d? | 173d | finish no earlier than 2009-03-15 |
| 33 | 2 | **常、减压塔区** |  | 288d? | 2008-10-13 A | 2009-10-30 | 3% | 280.11d? | 2008-10-13 | 2009-10-30 | 288d? | 0d |  |
| 34 | 2.1 | **主要控制点** |  | 251d? | 2008-11-30 | 2009-10-30 |  |  | 2008-11-30 | 2009-10-30 | 251d? | 0d |  |
| 35 | 2.1.1 | 常、减压塔区基础开挖、回填 | milestone | 1d? | 2008-11-30 | 2008-11-30 |  |  | 2008-11-30 | 2008-11-30 | 1d? | 250d | start no earlier than 2008-11-30 |
| 36 | 2.1.2 | 完成基础施工 |  | 43d? | 2009-01-15 | 2009-03-13 |  |  | 2009-01-15 | 2009-03-13 | 43d? | 174d | start no earlier than 2009-01-15 |
| 37 | 2.1.3 | 塔主体（含内件）施工完成 | milestone | 1d? | 2009-07-30 | 2009-07-30 |  |  | 2009-07-30 | 2009-07-30 | 1d? | 70d | start no earlier than 2009-07-30 |
| 38 | 2.1.4 | 完成填料安装,具备试压条件 | milestone | 1d? | 2009-08-30 | 2009-08-30 |  |  | 2009-08-30 | 2009-08-30 | 1d? | 47d | start no earlier than 2009-08-30 |
| 39 | 2.1.5 | 完成水压试验及沉降观测 | milestone | 1d? | 2009-09-25 | 2009-09-25 |  |  | 2009-09-25 | 2009-09-25 | 1d? | 27d | start no earlier than 2009-09-25 |
| 40 | 2.1.6 | 完成防腐保温 | milestone | 1d? | 2009-10-20 | 2009-10-20 |  |  | 2009-10-20 | 2009-10-20 | 1d? | 9d | start no earlier than 2009-10-20 |
| 41 | 2.1.7 | 完成三查四定 | milestone | 1d? | 2009-10-30 | 2009-10-30 |  |  | 2009-10-30 | 2009-10-30 | 1d? | 0d | start no earlier than 2009-10-30 |
| 42 | 2.2 | **保主要控制点的设计条件** |  | 127d? | 2008-10-13 A | 2009-03-31 | 11% | 113.63d? | 2008-10-13 | 2009-03-31 | 127d? | 161d |  |
| 43 | 2.2.1 | 土建基础提供钢筋水泥备料图到 | milestone | 1d? | 2008-12-25 | 2008-12-25 |  |  | 2008-12-25 | 2008-12-25 | 1d? | 231d | start no earlier than 2008-12-25 |
| 44 | 2.2.2 | 提供常压、减压塔区落地设备基础 | milestone | 1d? | 2009-01-09 A | 2009-01-09 |  | 1d? | 2009-01-15 | 2009-01-15 | 1d? | 220d | start no earlier than 2009-01-15 |
| 45 | 2.2.3 | 提供常、减压塔复合板材料备料单 | milestone | 1d? | 2008-10-13 A | 2008-10-13 A | 100% |  | 2008-10-13 | 2008-10-13 | 1d? |  | start no earlier than 2008-10-13 |
| 46 | 2.2.4 | 提供其他复合板塔备料图 | milestone | 1d? | 2008-11-06 A | 2008-11-06 A | 100% |  | 2008-11-20 | 2008-11-20 | 1d? |  | start no earlier than 2008-11-20 |
| 47 | 2.2.5 | 提供常、减压塔制造图 | milestone | 1d? | 2009-03-15 | 2009-03-15 |  |  | 2009-03-15 | 2009-03-15 | 1d? | 173d | start no earlier than 2009-03-15 |
| 48 | 2.2.6 | 其他3具塔的制造图 |  | 13d? | 2009-03-15 | 2009-03-31 |  |  | 2009-03-15 | 2009-03-31 | 13d? | 161d | finish no earlier than 2009-03-31 |
| 49 | 2.2.7 | 完成塔内件设计图纸 | milestone | 1d? | 2008-12-30 | 2008-12-30 |  |  | 2008-12-30 | 2008-12-30 | 1d? | 228d | start no earlier than 2008-12-30 |

Notes:
- 44: 仅C201-203基础图（减压框架基础图本版作废、改21日版）

| ID | WBS | Task | Type | Duration | Start | Finish | Baseline start | Baseline finish | Baseline duration | Total slack | Constraint |
| --- | --- | --- | --- | --- | --- | --- | --- | --- | --- | --- | --- |
| 50 | 2.3 | **保主要控制点的物采条件** |  | 106d? | 2009-01-15 | 2009-06-05 | 2009-01-15 | 2009-06-05 | 106d? | 111d |  |
| 51 | 2.3.1 | 土建基础材料到全 | milestone | 1d? | 2009-01-15 | 2009-01-15 | 2009-01-15 | 2009-01-15 | 1d? | 216d | start no earlier than 2009-01-15 |
| 52 | 2.3.2 | 复合板材料到货（常减压塔） | milestone | 1d? | 2009-01-30 | 2009-01-30 | 2009-01-30 | 2009-01-30 | 1d? | 205d | start no earlier than 2009-01-30 |
| 53 | 2.3.3 | 供货分配管及固定件 | milestone | 1d? | 2009-03-15 | 2009-03-15 | 2009-03-15 | 2009-03-15 | 1d? | 173d | start no earlier than 2009-03-15 |
| 54 | 2.3.4 | 塔内件全部供货到现场 | milestone | 1d? | 2009-04-30 | 2009-04-30 | 2009-04-30 | 2009-04-30 | 1d? | 139d | start no earlier than 2009-04-30 |
| 55 | 2.3.5 | 其他3具塔到货 | milestone | 1d? | 2009-06-05 | 2009-06-05 | 2009-06-05 | 2009-06-05 | 1d? | 111d | start no earlier than 2009-06-05 |
| 56 | 3 | **常、减压框架区** |  | 270d? | 2008-11-05 | 2009-10-30 | 2008-11-05 | 2009-10-30 | 270d? | 0d |  |
| 57 | 3.1 | **主要控制点** |  | 140d? | 2009-04-30 | 2009-10-30 | 2009-04-30 | 2009-10-30 | 140d? | 0d |  |
| 58 | 3.1.1 | 完成土建基础施工 | milestone | 1d? | 2009-04-30 | 2009-04-30 | 2009-04-30 | 2009-04-30 | 1d? | 139d | start no earlier than 2009-04-30 |
| 59 | 3.1.2 | 完成框架结构施工 | milestone | 1d? | 2009-06-30 | 2009-06-30 | 2009-06-30 | 2009-06-30 | 1d? | 93d | start no earlier than 2009-06-30 |
| 60 | 3.1.3 | 设备安装完成(钢结构施工过程穿插设备安装) | milestone | 1d? | 2009-07-10 | 2009-07-10 | 2009-07-10 | 2009-07-10 | 1d? | 84d | start no earlier than 2009-07-10 |
| 61 | 3.1.4 | 工艺安装完成 | milestone | 1d? | 2009-09-10 | 2009-09-10 | 2009-09-10 | 2009-09-10 | 1d? | 38d | start no earlier than 2009-09-10 |
| 62 | 3.1.5 | 设备及工艺管道试压完成 | milestone | 1d? | 2009-10-10 | 2009-10-10 | 2009-10-10 | 2009-10-10 | 1d? | 16d | start no earlier than 2009-10-10 |
| 63 | 3.1.6 | 完成防腐保温及三查四定 | milestone | 1d? | 2009-10-30 | 2009-10-30 | 2009-10-30 | 2009-10-30 | 1d? | 0d | start no earlier than 2009-10-30 |
| 64 | 3.2 | **保主要控制点设计条件** |  | 170d? | 2008-11-05 | 2009-06-20 | 2008-11-05 | 2009-06-20 | 170d? | 100d |  |
| 65 | 3.2.1 | 提供备料单 | milestone | 1d? | 2009-02-25 | 2009-02-25 | 2009-02-25 | 2009-02-25 | 1d? | 187d | start no earlier than 2009-02-25 |
| 66 | 3.2.2 | 交付±0以下基础图 | milestone | 1d? | 2009-03-10 | 2009-03-10 | 2009-03-10 | 2009-03-10 | 1d? | 177d | start no earlier than 2009-03-10 |
| 67 | 3.2.3 | 交付±0以上结构图 | milestone | 1d? | 2009-04-20 | 2009-04-20 | 2009-04-20 | 2009-04-20 | 1d? | 147d | start no earlier than 2009-04-20 |
| 68 | 3.2.4 | 交付±0以上结构图H型钢备料单。（未确定） | milestone | 1d? | 2009-03-10 | 2009-03-10 | 2009-03-10 | 2009-03-10 | 1d? | 177d | start no earlier than 2009-03-10 |
| 69 | 3.2.5 | 初设审查完成15天约12月初提供80%量的复合管备料单 | milestone | 1d? | 2008-12-05 | 2008-12-05 | 2008-12-05 | 2008-12-05 | 1d? | 245d | start no earlier than 2008-12-05 |
| 70 | 3.2.6 | 提供复合管详细材料备料单 | milestone | 1d? | 2009-03-30 | 2009-03-30 | 2009-03-30 | 2009-03-30 | 1d? | 162d | start no earlier than 2009-03-30 |
| 71 | 3.2.7 | 提供其他材料备料单 | milestone | 1d? | 2009-05-30 | 2009-05-30 | 2009-05-30 | 2009-05-30 | 1d? | 116d | start no earlier than 2009-05-30 |
| 72 | 3.2.8 | 交付工艺安装配管管段白图 |  | 1d? | 2009-05-30 | 2009-05-30 | 2009-05-30 | 2009-05-30 | 1d? | 116d | start no earlier than 2009-05-30 |
| 73 | 3.2.9 | 工艺安装专业施工图提供 | milestone | 1d? | 2009-06-20 | 2009-06-20 | 2009-06-20 | 2009-06-20 | 1d? | 100d | start no earlier than 2009-06-20 |
| 74 | 3.2.10 | 复合板、钛材等特殊材料换热设备备料图 | milestone | 1d? | 2008-11-30 | 2008-11-30 | 2008-11-30 | 2008-11-30 | 1d? | 250d | start no earlier than 2008-11-30 |
| 75 | 3.2.11 | 复合板材料换热设备制造图到图 | milestone | 1d? | 2009-03-15 | 2009-03-15 | 2009-03-15 | 2009-03-15 | 1d? | 173d | start no earlier than 2009-03-15 |
| 76 | 3.2.12 | 提供普通材质换热器订货数据表 | milestone | 1d? | 2008-11-05 | 2008-11-05 | 2008-11-05 | 2008-11-05 | 1d? | 269d | start no earlier than 2008-11-05 |
| 77 | 3.2.13 | 普通材质换热器制造技术要求提供，制造厂家2008年12月20日前将设备制造图返回设计 | milestone | 1d? | 2008-11-20 | 2008-11-20 | 2008-11-20 | 2008-11-20 | 1d? | 257d | start no earlier than 2008-11-20 |
| 78 | 3.2.14 | 其它非标设备制造图分期分批提供 | milestone | 1d? | 2009-03-15 | 2009-03-15 | 2009-03-15 | 2009-03-15 | 1d? | 173d | start no earlier than 2009-03-15 |
| 79 | 3.2.15 | 提供空冷器订货资料 | milestone | 1d? | 2008-11-10 | 2008-11-10 | 2008-11-10 | 2008-11-10 | 1d? | 266d | start no earlier than 2008-11-10 |
| 80 | 3.2.16 | 空冷器设计技术资料返回设计院 | milestone | 1d? | 2008-12-15 | 2008-12-15 | 2008-12-15 | 2008-12-15 | 1d? | 239d | start no earlier than 2008-12-15 |

| ID | WBS | Task | Type | Duration | Start | Finish | Baseline start | Baseline finish | Baseline duration | Total slack | Constraint |
| --- | --- | --- | --- | --- | --- | --- | --- | --- | --- | --- | --- |
| 81 | 3.3 | **保主要控制点物采条件** |  | 204d? | 2008-11-15 | 2009-08-15 | 2008-11-15 | 2009-08-15 | 204d? | 58d |  |
| 82 | 3.3.1 | 完成普通材质换热器订货(吨单价订货) | milestone | 1d? | 2008-11-15 | 2008-11-15 | 2008-11-15 | 2008-11-15 | 1d? | 261d | start no earlier than 2008-11-15 |
| 83 | 3.3.2 | 完成±0以下基础备料 | milestone | 1d? | 2009-03-30 | 2009-03-30 | 2009-03-30 | 2009-03-30 | 1d? | 162d | start no earlier than 2009-03-30 |
| 84 | 3.3.3 | 完成±0以上结构备料 | milestone | 1d? | 2009-05-20 | 2009-05-20 | 2009-05-20 | 2009-05-20 | 1d? | 124d | start no earlier than 2009-05-20 |
| 85 | 3.3.4 | 工艺安装管阀配件到货60% | milestone | 1d? | 2009-06-30 | 2009-06-30 | 2009-06-30 | 2009-06-30 | 1d? | 93d | start no earlier than 2009-06-30 |
| 86 | 3.3.5 | 所有工艺安装管阀配件到货 | milestone | 1d? | 2009-08-15 | 2009-08-15 | 2009-08-15 | 2009-08-15 | 1d? | 58d | start no earlier than 2009-08-15 |
| 87 | 3.3.6 | 所有设备按照安装顺序到货 |  | 46d? | 2009-04-30 | 2009-06-29 | 2009-04-30 | 2009-06-29 | 46d? | 94d | start no earlier than 2009-04-30 |
| 88 | 4 | **配电室 (机柜间)** |  | 216d? | 2008-12-15 | 2009-09-30 | 2008-12-15 | 2009-09-30 | 216d? | 24d |  |
| 89 | 4.1 | **主要控制点** |  | 58d? | 2009-07-15 | 2009-09-30 | 2009-07-15 | 2009-09-30 | 58d? | 24d |  |
| 90 | 4.1.1 | 完成±0以下施工 | milestone | 1d? | 2009-09-30 | 2009-09-30 | 2009-09-30 | 2009-09-30 | 1d? | 24d | start no earlier than 2009-09-30 |
| 91 | 4.1.2 | 完成主体结构施工（具备内部交付电器安装条件） | milestone | 1d? | 2009-07-15 | 2009-07-15 | 2009-07-15 | 2009-07-15 | 1d? | 81d | start no earlier than 2009-07-15 |
| 92 | 4.1.3 | 完成电气安装施工 | milestone | 1d? | 2009-08-30 | 2009-08-30 | 2009-08-30 | 2009-08-30 | 1d? | 47d | start no earlier than 2009-08-30 |
| 93 | 4.1.4 | 具备送电条件 | milestone | 1d? | 2009-09-15 | 2009-09-15 | 2009-09-15 | 2009-09-15 | 1d? | 35d | start no earlier than 2009-09-15 |
| 94 | 4.2 | **保主要控制点的设计条件** |  | 147d? | 2008-12-15 | 2009-06-30 | 2008-12-15 | 2009-06-30 | 147d? | 93d |  |
| 95 | 4.2.1 | 提供高压柜技术规格书 | milestone | 1d? | 2008-12-15 | 2008-12-15 | 2008-12-15 | 2008-12-15 | 1d? | 239d | start no earlier than 2008-12-15 |
| 96 | 4.2.2 | 土建基础±0以下备料单 | milestone | 1d? | 2009-01-15 | 2009-01-15 | 2009-01-15 | 2009-01-15 | 1d? | 216d | start no earlier than 2009-01-15 |
| 97 | 4.2.3 | 土建基础±0以下施工图 | milestone | 1d? | 2009-02-10 | 2009-02-10 | 2009-02-10 | 2009-02-10 | 1d? | 198d | start no earlier than 2009-02-10 |
| 98 | 4.2.4 | 土建基础±0以上施工图（包含建筑电气相关图纸） | milestone | 1d? | 2009-03-26 | 2009-03-26 | 2009-03-26 | 2009-03-26 | 1d? | 164d | start no earlier than 2009-03-26 |
| 99 | 4.2.5 | 低压柜询价书 | milestone | 1d? | 2009-03-15 | 2009-03-15 | 2009-03-15 | 2009-03-15 | 1d? | 173d | start no earlier than 2009-03-15 |
| 100 | 4.2.6 | 施工图齐全 | milestone | 1d? | 2009-06-30 | 2009-06-30 | 2009-06-30 | 2009-06-30 | 1d? | 93d | start no earlier than 2009-06-30 |
| 101 | 4.3 | **保主要控制点物资供应条件** |  | 107d? | 2009-02-25 | 2009-07-15 | 2009-02-25 | 2009-07-15 | 107d? | 81d |  |
| 102 | 4.3.1 | 土建基础±0以下材料到货 | milestone | 1d? | 2009-02-25 | 2009-02-25 | 2009-02-25 | 2009-02-25 | 1d? | 187d | start no earlier than 2009-02-25 |
| 103 | 4.3.2 | 土建基础±0以上材料到货 | milestone | 1d? | 2009-04-20 | 2009-04-20 | 2009-04-20 | 2009-04-20 | 1d? | 147d | start no earlier than 2009-04-20 |
| 104 | 4.3.3 | 高、低压柜到货 | milestone | 1d? | 2009-04-30 | 2009-04-30 | 2009-04-30 | 2009-04-30 | 1d? | 139d | start no earlier than 2009-04-30 |
| 105 | 4.3.4 | 电气材料备齐，具备施工条件 | milestone | 1d? | 2009-07-15 | 2009-07-15 | 2009-07-15 | 2009-07-15 | 1d? | 81d | start no earlier than 2009-07-15 |
| 106 | 4.3.5 | 槽盒、电缆、角钢和镀锌管到货 | milestone | 1d? | 2009-06-30 | 2009-06-30 | 2009-06-30 | 2009-06-30 | 1d? | 93d | start no earlier than 2009-06-30 |

| ID | WBS | Task | Type | Duration | Start | Finish | Baseline start | Baseline finish | Baseline duration | Total slack | Constraint |
| --- | --- | --- | --- | --- | --- | --- | --- | --- | --- | --- | --- |
| 107 | 5 | **轻烃回收区** |  | 304d? | 2008-09-20 | 2009-10-30 | 2008-09-20 | 2009-10-30 | 304d? | 0d |  |
| 108 | 5.1 | **主要控制点** |  | 117d? | 2009-05-30 | 2009-10-30 | 2009-05-30 | 2009-10-30 | 117d? | 0d |  |
| 109 | 5.1.1 | 完成基础施工 | milestone | 1d? | 2009-05-30 | 2009-05-30 | 2009-05-30 | 2009-05-30 | 1d? | 116d | start no earlier than 2009-05-30 |
| 110 | 5.1.2 | 完成所有设备安装施工 | milestone | 1d? | 2009-06-30 | 2009-06-30 | 2009-06-30 | 2009-06-30 | 1d? | 93d | start no earlier than 2009-06-30 |
| 111 | 5.1.3 | 完成工艺管道安装和试压 | milestone | 1d? | 2009-08-30 | 2009-08-30 | 2009-08-30 | 2009-08-30 | 1d? | 47d | start no earlier than 2009-08-30 |
| 112 | 5.1.4 | 完成管道防腐保温 | milestone | 1d? | 2009-09-10 | 2009-09-10 | 2009-09-10 | 2009-09-10 | 1d? | 38d | start no earlier than 2009-09-10 |
| 113 | 5.1.5 | 完成电气仪表的接线和调试 | milestone | 1d? | 2009-09-30 | 2009-09-30 | 2009-09-30 | 2009-09-30 | 1d? | 24d | start no earlier than 2009-09-30 |
| 114 | 5.1.6 | 完成单机试运转 | milestone | 1d? | 2009-10-10 | 2009-10-10 | 2009-10-10 | 2009-10-10 | 1d? | 16d | start no earlier than 2009-10-10 |
| 115 | 5.1.7 | 完成三查四定 | milestone | 1d? | 2009-10-30 | 2009-10-30 | 2009-10-30 | 2009-10-30 | 1d? | 0d | start no earlier than 2009-10-30 |
| 116 | 5.2 | **保主要控制点设计条件** |  | 204d? | 2008-09-20 | 2009-06-20 | 2008-09-20 | 2009-06-20 | 204d? | 100d |  |
| 117 | 5.2.1 | 交付压缩机技术规格书 | milestone | 1d? | 2008-09-20 | 2008-09-20 | 2008-09-20 | 2008-09-20 | 1d? | 303d | start no earlier than 2008-09-20 |
| 118 | 5.2.2 | 交付压缩机基础施工图。（要求采购按时返资料） | milestone | 1d? | 2009-04-30 | 2009-04-30 | 2009-04-30 | 2009-04-30 | 1d? | 139d | start no earlier than 2009-04-30 |
| 119 | 5.2.3 | 交付压缩机配管施工图 | milestone | 1d? | 2009-06-20 | 2009-06-20 | 2009-06-20 | 2009-06-20 | 1d? | 100d | start no earlier than 2009-06-20 |
| 120 | 5.3 | **保主要控制点物采条件** |  | 63d? | 2009-05-10 | 2009-07-30 | 2009-05-10 | 2009-07-30 | 63d? | 70d |  |
| 121 | 5.3.1 | 压缩机基础及其他设备基础材料全部到货 | milestone | 1d? | 2009-05-10 | 2009-05-10 | 2009-05-10 | 2009-05-10 | 1d? | 132d | start no earlier than 2009-05-10 |
| 122 | 5.3.2 | 压缩机及其他设备到货 | milestone | 1d? | 2009-06-15 | 2009-06-15 | 2009-06-15 | 2009-06-15 | 1d? | 105d | start no earlier than 2009-06-15 |
| 123 | 5.3.3 | 压缩机配管材料到货 | milestone | 1d? | 2009-07-30 | 2009-07-30 | 2009-07-30 | 2009-07-30 | 1d? | 70d | start no earlier than 2009-07-30 |
| 124 | 6 | **管廊** |  | 267d? | 2008-11-10 | 2009-10-30 | 2008-11-10 | 2009-10-30 | 267d? | 0d |  |
| 125 | 6.1 | **主要控制点** |  | 140d? | 2009-04-30 | 2009-10-30 | 2009-04-30 | 2009-10-30 | 140d? | 0d |  |
| 126 | 6.1.1 | 完成管廊基础施工 | milestone | 1d? | 2009-04-30 | 2009-04-30 | 2009-04-30 | 2009-04-30 | 1d? | 139d | start no earlier than 2009-04-30 |
| 127 | 6.1.2 | 完成钢结构的预制安装 | milestone | 1d? | 2009-06-30 | 2009-06-30 | 2009-06-30 | 2009-06-30 | 1d? | 93d | start no earlier than 2009-06-30 |
| 128 | 6.1.3 | 完成工艺管道的预制安装 | milestone | 1d? | 2009-09-15 | 2009-09-15 | 2009-09-15 | 2009-09-15 | 1d? | 35d | start no earlier than 2009-09-15 |
| 129 | 6.1.4 | 工艺管道试压完成 | milestone | 1d? | 2009-10-05 | 2009-10-05 | 2009-10-05 | 2009-10-05 | 1d? | 21d | start no earlier than 2009-10-05 |
| 130 | 6.1.5 | 完成防腐保温 | milestone | 1d? | 2009-10-25 | 2009-10-25 | 2009-10-25 | 2009-10-25 | 1d? | 5d | start no earlier than 2009-10-25 |
| 131 | 6.1.6 | 完成三查四定 | milestone | 1d? | 2009-10-30 | 2009-10-30 | 2009-10-30 | 2009-10-30 | 1d? | 0d | start no earlier than 2009-10-30 |

| ID | WBS | Task | Type | Duration | Start | Finish | Baseline start | Baseline finish | Baseline duration | Total slack | Constraint |
| --- | --- | --- | --- | --- | --- | --- | --- | --- | --- | --- | --- |
| 132 | 6.2 | **保主要控制点的设计条件** |  | 167d? | 2008-11-10 | 2009-06-20 | 2008-11-10 | 2009-06-20 | 167d? | 100d |  |
| 133 | 6.2.1 | 基础备料图到（未确认） | milestone | 1d? | 2009-02-25 | 2009-02-25 | 2009-02-25 | 2009-02-25 | 1d? | 187d | start no earlier than 2009-02-25 |
| 134 | 6.2.2 | 基础施工图到（包括管廊下泵基础） | milestone | 1d? | 2009-04-10 | 2009-04-10 | 2009-04-10 | 2009-04-10 | 1d? | 153d | start no earlier than 2009-04-10 |
| 135 | 6.2.3 | 钢结构备料图（包括节点）到（未确认） | milestone | 1d? | 2009-03-20 | 2009-03-20 | 2009-03-20 | 2009-03-20 | 1d? | 168d | start no earlier than 2009-03-20 |
| 136 | 6.2.4 | 钢结构图到 | milestone | 1d? | 2009-04-30 | 2009-04-30 | 2009-04-30 | 2009-04-30 | 1d? | 139d | start no earlier than 2009-04-30 |
| 137 | 6.2.5 | 管廊部分工艺配管备料单到 | milestone | 1d? | 2009-05-10 | 2009-05-10 | 2009-05-10 | 2009-05-10 | 1d? | 132d | start no earlier than 2009-05-10 |
| 138 | 6.2.6 | 管廊部分工艺配管图到 | milestone | 1d? | 2009-06-20 | 2009-06-20 | 2009-06-20 | 2009-06-20 | 1d? | 100d | start no earlier than 2009-06-20 |
| 139 | 6.2.7 | 提供空冷技术规格书 | milestone | 1d? | 2008-11-10 | 2008-11-10 | 2008-11-10 | 2008-11-10 | 1d? | 266d | start no earlier than 2008-11-10 |
| 140 | 6.2.8 | 小设备（包括泵）基础图到 | milestone | 1d? | 2009-04-30 | 2009-04-30 | 2009-04-30 | 2009-04-30 | 1d? | 139d | start no earlier than 2009-04-30 |
| 141 | 6.2.9 | 初设审查完成15天约12月初提供80%量的复合管备料单 | milestone | 1d? | 2008-12-05 | 2008-12-05 | 2008-12-05 | 2008-12-05 | 1d? | 245d | start no earlier than 2008-12-05 |
| 142 | 6.2.10 | 提供复合管详细材料备料单 | milestone | 1d? | 2009-03-30 | 2009-03-30 | 2009-03-30 | 2009-03-30 | 1d? | 162d | start no earlier than 2009-03-30 |
| 143 | 6.2.11 | 提供其他材料备料单 | milestone | 1d? | 2009-05-30 | 2009-05-30 | 2009-05-30 | 2009-05-30 | 1d? | 116d | start no earlier than 2009-05-30 |
| 144 | 6.3 | **保主要控制点的物资供应条件** |  | 93d? | 2009-03-30 | 2009-07-30 | 2009-03-30 | 2009-07-30 | 93d? | 70d |  |
| 145 | 6.3.1 | 基础施工材料到货 | milestone | 1d? | 2009-03-30 | 2009-03-30 | 2009-03-30 | 2009-03-30 | 1d? | 162d | start no earlier than 2009-03-30 |
| 146 | 6.3.2 | 钢结构备料完成80% | milestone | 1d? | 2009-04-30 | 2009-04-30 | 2009-04-30 | 2009-04-30 | 1d? | 139d | start no earlier than 2009-04-30 |
| 147 | 6.3.3 | 材料全部到齐 | milestone | 1d? | 2009-05-15 | 2009-05-15 | 2009-05-15 | 2009-05-15 | 1d? | 127d | start no earlier than 2009-05-15 |
| 148 | 6.3.4 | 工艺安装管阀配件到货60% | milestone | 1d? | 2009-07-15 | 2009-07-15 | 2009-07-15 | 2009-07-15 | 1d? | 81d | start no earlier than 2009-07-15 |
| 149 | 6.3.5 | 所有工艺安装管阀配件到货 | milestone | 1d? | 2009-07-30 | 2009-07-30 | 2009-07-30 | 2009-07-30 | 1d? | 70d | start no earlier than 2009-07-30 |
| 150 | 6.3.6 | 空冷到货 | milestone | 1d? | 2009-06-30 | 2009-06-30 | 2009-06-30 | 2009-06-30 | 1d? | 93d | start no earlier than 2009-06-30 |
| 151 | 6.3.7 | 机泵 | milestone | 1d? | 2009-05-20 | 2009-05-20 | 2009-05-20 | 2009-05-20 | 1d? | 124d | start no earlier than 2009-05-20 |
| 152 | 7 | **地下管道** |  | 104d? | 2009-02-28 | 2009-07-15 | 2009-02-28 | 2009-07-15 | 104d? | 81d |  |
| 153 | 7.1 | **主要控制点** |  | 1d? | 2009-04-30 | 2009-04-30 | 2009-04-30 | 2009-04-30 | 1d? | 139d |  |
| 154 | 7.1.1 | 完成主干管道施工 | milestone | 1d? | 2009-04-30 | 2009-04-30 | 2009-04-30 | 2009-04-30 | 1d? | 139d | start no earlier than 2009-04-30 |
| 155 | 7.2 | **保主要控制点的设计条件** |  | 104d? | 2009-02-28 | 2009-07-15 | 2009-02-28 | 2009-07-15 | 104d? | 81d |  |
| 156 | 7.2.1 | 主管备料图到图 | milestone | 1d? | 2009-02-28 | 2009-02-28 | 2009-02-28 | 2009-02-28 | 1d? | 184d | start no earlier than 2009-02-28 |
| 157 | 7.2.2 | 主管施工图到图 | milestone | 1d? | 2009-03-30 | 2009-03-30 | 2009-03-30 | 2009-03-30 | 1d? | 162d | start no earlier than 2009-03-30 |
| 158 | 7.2.3 | 支管备料图到图 | milestone | 1d? | 2009-05-15 | 2009-05-15 | 2009-05-15 | 2009-05-15 | 1d? | 127d | start no earlier than 2009-05-15 |
| 159 | 7.2.4 | 支管施工图到图 | milestone | 1d? | 2009-07-15 | 2009-07-15 | 2009-07-15 | 2009-07-15 | 1d? | 81d | start no earlier than 2009-07-15 |

| ID | WBS | Task | Type | Duration | Start | Finish | Baseline start | Baseline finish | Baseline duration | Total slack | Constraint |
| --- | --- | --- | --- | --- | --- | --- | --- | --- | --- | --- | --- |
| 160 | 7.3 | **保主要控制点的物资供应条件** |  | 1d? | 2009-03-30 | 2009-03-30 | 2009-03-30 | 2009-03-30 | 1d? | 162d |  |
| 161 | 7.3.1 | 完成卷管及其他材料备料 | milestone | 1d? | 2009-03-30 | 2009-03-30 | 2009-03-30 | 2009-03-30 | 1d? | 162d | start no earlier than 2009-03-30 |
| 162 | 8 | **电气** |  | 139d? | 2009-03-15 | 2009-09-15 | 2009-03-15 | 2009-09-15 | 139d? | 35d |  |
| 163 | 8.1 | **主要控制点** |  | 1d? | 2009-09-15 | 2009-09-15 | 2009-09-15 | 2009-09-15 | 1d? | 35d |  |
| 164 | 8.1.1 | 完成主干电缆铺设和实验具备送电条件 | milestone | 1d? | 2009-09-15 | 2009-09-15 | 2009-09-15 | 2009-09-15 | 1d? | 35d | start no earlier than 2009-09-15 |
| 165 | 8.2 | **保主要控制点设计条件** |  | 104d? | 2009-03-15 | 2009-07-30 | 2009-03-15 | 2009-07-30 | 104d? | 70d |  |
| 166 | 8.2.1 | 接地图到 | milestone | 1d? | 2009-03-15 | 2009-03-15 | 2009-03-15 | 2009-03-15 | 1d? | 173d | start no earlier than 2009-03-15 |
| 167 | 8.2.2 | 电缆、桥架、直流柜及火灾报警等电气材料订货资料 | milestone | 1d? | 2009-05-30 | 2009-05-30 | 2009-05-30 | 2009-05-30 | 1d? | 116d | start no earlier than 2009-05-30 |
| 168 | 8.2.3 | 施工图全部到齐 | milestone | 1d? | 2009-07-30 | 2009-07-30 | 2009-07-30 | 2009-07-30 | 1d? | 70d | start no earlier than 2009-07-30 |
| 169 | 8.3 | **保主要控制点物采条件** |  | 36d? | 2009-06-30 | 2009-08-15 | 2009-06-30 | 2009-08-15 | 36d? | 58d |  |
| 170 | 8.3.1 | 槽盒角钢及镀锌穿线管材料到齐 | milestone | 1d? | 2009-06-30 | 2009-06-30 | 2009-06-30 | 2009-06-30 | 1d? | 93d | start no earlier than 2009-06-30 |
| 171 | 8.3.2 | 材料到齐 | milestone | 1d? | 2009-08-15 | 2009-08-15 | 2009-08-15 | 2009-08-15 | 1d? | 58d | start no earlier than 2009-08-15 |
| 172 | 9 | **仪表** |  | 232d? | 2008-12-25 | 2009-10-30 | 2008-12-25 | 2009-10-30 | 232d? | 0d |  |
| 173 | 9.1 | **主要控制点** |  | 59d? | 2009-08-15 | 2009-10-30 | 2009-08-15 | 2009-10-30 | 59d? | 0d |  |
| 174 | 9.1.1 | 开始全面施工 | milestone | 1d? | 2009-08-15 | 2009-08-15 | 2009-08-15 | 2009-08-15 | 1d? | 58d | start no earlier than 2009-08-15 |
| 175 | 9.1.2 | 完成主体工作量,具备调试条件 | milestone | 1d? | 2009-09-25 | 2009-09-25 | 2009-09-25 | 2009-09-25 | 1d? | 27d | start no earlier than 2009-09-25 |
| 176 | 9.1.3 | 完成试压和防腐保温 | milestone | 1d? | 2009-10-10 | 2009-10-10 | 2009-10-10 | 2009-10-10 | 1d? | 16d | start no earlier than 2009-10-10 |
| 177 | 9.1.4 | 完成三查四定 | milestone | 1d? | 2009-10-30 | 2009-10-30 | 2009-10-30 | 2009-10-30 | 1d? | 0d | start no earlier than 2009-10-30 |
| 178 | 9.2 | **保主要控制点的设计条件** |  | 162d? | 2008-12-25 | 2009-07-30 | 2008-12-25 | 2009-07-30 | 162d? | 70d |  |
| 179 | 9.2.1 | 完成DCS技术规格书 | milestone | 1d? | 2008-12-30 | 2008-12-30 | 2008-12-30 | 2008-12-30 | 1d? | 228d | start no earlier than 2008-12-30 |
| 180 | 9.2.2 | 提供I/O清单一览表、自控流程图、逻辑图相关组态资料 | milestone | 1d? | 2009-04-30 | 2009-04-30 | 2009-04-30 | 2009-04-30 | 1d? | 139d | start no earlier than 2009-04-30 |
| 181 | 9.2.3 | 提交调节阀、流量计技术规格书 | milestone | 1d? | 2008-12-25 | 2008-12-25 | 2008-12-25 | 2008-12-25 | 1d? | 231d | start no earlier than 2008-12-25 |
| 182 | 9.2.4 | 全部仪表规格书 | milestone | 1d? | 2009-02-25 | 2009-02-25 | 2009-02-25 | 2009-02-25 | 1d? | 187d | start no earlier than 2009-02-25 |
| 183 | 9.2.5 | 材料订货单 | milestone | 1d? | 2009-07-15 | 2009-07-15 | 2009-07-15 | 2009-07-15 | 1d? | 81d | start no earlier than 2009-07-15 |
| 184 | 9.2.6 | 全部施工图 | milestone | 1d? | 2009-07-30 | 2009-07-30 | 2009-07-30 | 2009-07-30 | 1d? | 70d | start no earlier than 2009-07-30 |

| ID | WBS | Task | Type | Duration | Start | Finish | Baseline start | Baseline finish | Baseline duration | Total slack | Constraint |
| --- | --- | --- | --- | --- | --- | --- | --- | --- | --- | --- | --- |
| 185 | 9.3 | **保主要控制点的物资供应条件** |  | 156d? | 2009-01-02 | 2009-07-30 | 2009-01-02 | 2009-07-30 | 156d? | 70d |  |
| 186 | 9.3.1 | 完成调节阀、流量计订货 | milestone | 1d? | 2009-01-02 | 2009-01-02 | 2009-01-02 | 2009-01-02 | 1d? | 225d | start no earlier than 2009-01-02 |
| 187 | 9.3.2 | 所有材料到货 | milestone | 1d? | 2009-07-30 | 2009-07-30 | 2009-07-30 | 2009-07-30 | 1d? | 70d | start no earlier than 2009-07-30 |
